# Cronograma_VR_Bateria.xml

Schedule from MS Project XML, 2026-09-02 to 2026-11-26, status date 2026-11-18, A marks actual dates.

## Calendars

- Diana — Director de proyecto: Mon-Fri 08:00-12:00, 13:00-17:00; Sat-Sun off. Exceptions (off unless hours are given): 2026-09-12 08:00-12:00, 13:00-17:00, 2026-09-16 to 2026-09-19, 2026-09-19 08:00-12:00, 13:00-17:00, 2026-09-19 to 2026-09-20, 2026-09-20 08:00-12:00, 13:00-17:00, 2026-09-20 to 2026-09-27, 2026-10-10 08:00-12:00, 13:00-17:00, 2026-10-17 to 2026-10-18 08:00-12:00, 13:00-17:00, 2026-11-08 08:00-12:00, 13:00-17:00, 2026-11-16 to 2026-11-27.

## Resources

| Resource | Group | Rate | Notes |
| --- | --- | --- | --- |
| No Asignado |  |  |  |
| Benjamín — Desarrollador de gameplay | Juego de ritmo | 59.07 | 1.5 salarios mínimos por hora. Tarifa base: $39.38/h. |
| Kimberly — Artista y modelador 3D | Entorno 3D y assets | 51.19 | 1.3 salarios mínimos por hora. Tarifa base: $39.38/h. |
| Sarai — Diseñador de interacción UX-XR | Interfaz / UX/UI | 51.19 | 1.3 salarios mínimos por hora. Tarifa base: $39.38/h. |
| Misael — Desarrollador de realidad virtual | Desarrollo VR y batería | 59.07 | 1.5 salarios mínimos por hora. Tarifa base: $39.38/h. |
| María — Analista e investigador | Experiencia emocional | 51.19 | 1.3 salarios mínimos por hora. Tarifa base: $39.38/h. |
| Javier — Compositor y diseñador musical | Música | 47.26 | 1.2 salarios mínimos por hora. Tarifa base: $39.38/h. |
| Christian — Diseñador de audio | Sonido | 47.26 | 1.2 salarios mínimos por hora. Tarifa base: $39.38/h. |
| Diana — Gerente de proyecto | QA, documentación y gestión | 70.88 | 1.8 salarios mínimos por hora. Tarifa base: $39.38/h. |
| Diana — Analista e investigador | QA, documentación y gestión | 51.19 | 1.3 salarios mínimos por hora. Tarifa base: $39.38/h. |
| Diana — Analista de pruebas (QA) | QA, documentación y gestión | 43.32 | 1.1 salarios mínimos por hora. Tarifa base: $39.38/h. |
| Diana — Redactor técnico | QA, documentación y gestión | 39.38 | 1.0 salarios mínimos por hora. Tarifa base: $39.38/h. |
| Diana — Desarrollador de realidad virtual | QA, documentación y gestión | 59.07 | 1.5 salarios mínimos por hora. Tarifa base: $39.38/h. |
| Diana — Director de proyecto | QA, documentación y gestión | 86.64 | 2.2 salarios mínimos por hora. Tarifa base: $39.38/h. |

## Schedule

| ID | WBS | Task | Duration | Start | Finish | Predecessors | Complete | Constraint | Resources |
| --- | --- | --- | --- | --- | --- | --- | --- | --- | --- |
| 1 | 1 | **D. Desarrollo VR y batería** | 7.88d | 2026-09-12 08:00 | 2026-10-18 17:00 |  | 92% |  |  |
| 2 | 1.1 | DP.1 — Crear el proyecto base en Unity y definir la versión que utilizará todo el equipo | 0.38d | 2026-09-16 08:00 A | 2026-09-16 17:00 A |  | 100% | start no earlier than 2026-09-16 08:00 | Misael — Desarrollador de realidad virtual |
| 3 | 1.2 | DP.2 — Configurar repositorio y estructura inicial de carpetas del proyecto | 0.38d | 2026-09-16 08:00 A | 2026-09-16 17:00 A | 2 | 100% | start no earlier than 2026-09-16 08:00 | Misael — Desarrollador de realidad virtual |
| 4 | 1.3 | DP.3 — Configurar control de versiones y reglas para evitar conflictos entre desarrolladores | 0.62d | 2026-09-17 08:00 A | 2026-09-17 17:00 A | 3 | 100% | start no earlier than 2026-09-17 08:00 | Misael — Desarrollador de realidad virtual |
| 5 | 1.4 | DX.1 — Instalar y configurar paquetes XR necesarios para realidad virtual | 0.62d | 2026-09-16 08:00 A | 2026-09-16 17:00 A | 2 | 100% | start no earlier than 2026-09-16 08:00 | Misael — Desarrollador de realidad virtual |
| 6 | 1.5 | DX.2 — Configurar OpenXR y compatibilidad con el visor VR seleccionado | 0.62d | 2026-09-16 08:00 A | 2026-09-16 17:00 A | 5 | 100% | start no earlier than 2026-09-16 08:00 | Misael — Desarrollador de realidad virtual |
| 7 | 1.6 | DX.3 — Crear escena técnica inicial para realizar pruebas de VR | 0.38d | 2026-09-16 08:00 A | 2026-09-16 17:00 A | 6 | 100% | start no earlier than 2026-09-16 08:00 | Misael — Desarrollador de realidad virtual |
| 8 | 1.7 | DX.4 — Configurar XR Origin, cámara y seguimiento de cabeza | 0.5d | 2026-09-16 08:00 A | 2026-09-16 17:00 A | 7 | 100% | start no earlier than 2026-09-16 08:00 | Misael — Desarrollador de realidad virtual |
| 9 | 1.8 | DX.5 — Configurar seguimiento de los controles derecho e izquierdo | 0.5d | 2026-09-16 08:00 A | 2026-09-16 17:00 A | 8 | 100% | start no earlier than 2026-09-16 08:00 | Misael — Desarrollador de realidad virtual |
| 10 | 1.9 | DX.6 — Comprobar escala, altura y posición del jugador dentro del entorno VR | 0.5d | 2026-09-16 08:00 A | 2026-09-16 17:00 A | 8 | 100% | start no earlier than 2026-09-16 08:00 | Misael — Desarrollador de realidad virtual |
| 11 | 1.11 | DB.1 — Crear versión provisional de las baquetas para pruebas | 0.38d | 2026-09-16 08:00 A | 2026-09-16 17:00 A | 7 | 100% | start no earlier than 2026-09-16 08:00 | Misael — Desarrollador de realidad virtual |
| 12 | 1.13 | DB.3 — Ajustar posición de agarre de cada baqueta en los controles VR | 0.75d | 2026-09-17 08:00 A | 2026-09-17 17:00 A | 9, 11 | 100% | start no earlier than 2026-09-17 08:00 | Misael — Desarrollador de realidad virtual |
| 13 | 1.14 | DT.1 — Crear batería provisional con objetos simples para comenzar pruebas | 0.62d | 2026-09-16 08:00 A | 2026-09-16 17:00 A | 7 | 100% | start no earlier than 2026-09-16 08:00 | Misael — Desarrollador de realidad virtual |
| 14 | 1.15 | DT.2 — Definir todos los componentes interactivos de la batería: snare, kick, toms, hi-hat, crash y ride | 0.75d | 2026-09-17 08:00 A | 2026-09-17 17:00 A | 13 | 100% | start no earlier than 2026-09-17 08:00 | Misael — Desarrollador de realidad virtual |
| 15 | 1.17 | DG.1 — Crear sistema general de detección de golpe entre baqueta y batería | 1d | 2026-09-12 08:00 A | 2026-09-12 17:00 A | 9, 11, 14 | 100% | start no earlier than 2026-09-12 08:00 | Misael — Desarrollador de realidad virtual |
| 16 | 1.18 | DG.2 — Identificar automáticamente qué pieza de la batería fue golpeada | 1d | 2026-09-16 08:00 A | 2026-09-16 17:00 A | 15 | 100% | start no earlier than 2026-09-16 08:00 | Misael — Desarrollador de realidad virtual |
| 17 | 1.19 | DG.3 — Detectar velocidad de movimiento de la baqueta antes del impacto | 1d | 2026-09-12 08:00 A | 2026-09-12 17:00 A | 15 | 100% | start no earlier than 2026-09-12 08:00 | Misael — Desarrollador de realidad virtual |
| 18 | 1.20 | DG.4 — Convertir la velocidad de la baqueta en un valor de intensidad de golpe | 1d | 2026-09-16 08:00 A | 2026-09-16 17:00 A | 17 | 100% | start no earlier than 2026-09-16 08:00 | Misael — Desarrollador de realidad virtual |
| 19 | 1.21 | DG.5 — Establecer niveles de intensidad suave, media y fuerte | 0.75d | 2026-09-16 08:00 A | 2026-09-16 17:00 A | 18 | 100% | start no earlier than 2026-09-16 08:00 | Misael — Desarrollador de realidad virtual |
| 20 | 1.22 | DG.6 — Implementar sistema para evitar golpes duplicados provocados por una misma colisión | 1d | 2026-09-12 08:00 A | 2026-09-12 17:00 A | 15 | 100% | start no earlier than 2026-09-12 08:00 | Misael — Desarrollador de realidad virtual |
| 21 | 1.23 | DH.1 — Configurar vibración háptica del controlador al golpear la batería | 0.75d | 2026-09-12 08:00 A | 2026-09-12 17:00 A | 15 | 100% | start no earlier than 2026-09-12 08:00 | Misael — Desarrollador de realidad virtual |
| 22 | 1.24 | DH.2 — Ajustar la intensidad háptica de acuerdo con la fuerza del golpe | 0.75d | 2026-09-16 08:00 A | 2026-09-16 17:00 A | 18, 21 | 100% | start no earlier than 2026-09-16 08:00 | Misael — Desarrollador de realidad virtual |
| 23 | 1.25 | DG.7 — Crear evento general DrumHit que informe instrumento, intensidad y tiempo del golpe | 1d | 2026-09-12 08:00 A | 2026-09-12 17:00 A | 16, 18 | 100% | start no earlier than 2026-09-12 08:00 | Misael — Desarrollador de realidad virtual |
| 24 | 1.26 | DG.8 — Implementar soporte independiente para golpe con baqueta izquierda y derecha | 0.75d | 2026-09-12 08:00 A | 2026-09-12 17:00 A | 23 | 100% | start no earlier than 2026-09-12 08:00 | Misael — Desarrollador de realidad virtual |
| 25 | 1.28 | DG.9 — Ajustar sensibilidad de las colisiones de batería | 1d | 2026-09-16 08:00 A | 2026-09-16 17:00 A | 15 | 100% | start no earlier than 2026-09-16 08:00 | Misael — Desarrollador de realidad virtual |
| 26 | 1.31 | DT.6 — Ajustar posición y dimensiones de batería para una postura cómoda en VR | 0.62d | 2026-09-17 08:00 A | 2026-09-17 17:00 A | 55, 54, 56, 25, 60 | 100% | start no earlier than 2026-09-17 08:00 | Misael — Desarrollador de realidad virtual |
| 27 | 1.32 | DR.1 — Realizar primera prueba completa de interacción física de la batería | 1.12d | 2026-09-16 08:00 A | 2026-09-16 17:00 A | 26, 4, 10, 12, 20, 22, 24, 55, 54, 56 | 100% | start no earlier than 2026-09-16 08:00 | Misael — Desarrollador de realidad virtual |
| 28 | 1.33 | DR.2 — Corregir errores detectados durante la primera prueba de batería | 1.12d | 2026-09-17 08:00 A | 2026-09-17 17:00 A | 27 | 100% | start no earlier than 2026-09-17 08:00 | Misael — Desarrollador de realidad virtual |
| 29 | 1.30 | DM.1 — Exportar las métricas de sesión: precisión temporal y constancia | 0.5d | 2026-10-18 08:00 A | 2026-10-18 17:00 A | 28 | 100% | start no earlier than 2026-10-18 08:00 |  |

Notes:
- 29: [AÑADIDA POR EL RECORTE] Cierra la medida de éxito 9. El marcador ya calculaba precisión y constancia; faltaba volcarlas a un archivo.

| ID | WBS | Task | Type | Duration | Start | Finish | Predecessors | Complete | Constraint | Resources |
| --- | --- | --- | --- | --- | --- | --- | --- | --- | --- | --- |
| 30 | 2 | **J. Juego de ritmo** |  | 9.38d | 2026-10-17 08:00 | 2026-10-17 17:00 |  | 100% |  |  |
| 31 | 2.1 | JA.1 — Definir técnicamente cómo funcionará el juego de ritmo |  | 1d | 2026-10-17 08:00 A | 2026-10-17 17:00 A |  | 100% | start no earlier than 2026-10-17 08:00 | Benjamín — Desarrollador de gameplay |
| 32 | 2.2 | JA.2 — Definir los datos necesarios para representar una nota musical dentro del juego |  | 0.38d | 2026-10-17 08:00 A | 2026-10-17 17:00 A | 31 | 100% | start no earlier than 2026-10-17 08:00 | Benjamín — Desarrollador de gameplay |
| 33 | 2.3 | JA.3 — Diseñar estructura de datos para canciones y beatmaps |  | 1d | 2026-10-17 08:00 A | 2026-10-17 17:00 A | 32 | 100% | start no earlier than 2026-10-17 08:00 | Benjamín — Desarrollador de gameplay |
| 34 | 2.4 | JT.1 — Crear sistema de reloj musical independiente de los FPS |  | 1d | 2026-10-17 08:00 A | 2026-10-17 17:00 A | 31 | 100% | start no earlier than 2026-10-17 08:00 | Benjamín — Desarrollador de gameplay |
| 35 | 2.5 | JT.2 — Implementar cálculo de BPM y duración de cada beat |  | 0.38d | 2026-10-17 08:00 A | 2026-10-17 17:00 A | 34 | 100% | start no earlier than 2026-10-17 08:00 | Benjamín — Desarrollador de gameplay |
| 36 | 2.6 | JT.3 — Implementar cálculo de compases y subdivisiones rítmicas |  | 1d | 2026-10-17 08:00 A | 2026-10-17 17:00 A | 35 | 100% | start no earlier than 2026-10-17 08:00 | Benjamín — Desarrollador de gameplay |
| 37 | 2.8 | JB.1 — Crear prototipo de beatmap manual | milestone | 0.62d | 2026-10-17 08:00 A | 2026-10-17 08:00 A | 33 | 100% | start no earlier than 2026-10-17 08:00 | Benjamín — Desarrollador de gameplay |
| 38 | 2.9 | JB.2 — Crear sistema que cargue un beatmap | milestone | 0d | 2026-10-17 08:00 A | 2026-10-17 08:00 A | 33 | 100% | start no earlier than 2026-10-17 08:00 | Benjamín — Desarrollador de gameplay |
| 39 | 2.10 | JB.3 — Sincronizar beatmap con reproducción de música |  | 0.75d | 2026-10-17 08:00 A | 2026-10-17 17:00 A | 34, 38, 37 | 100% | start no earlier than 2026-10-17 08:00 | Benjamín — Desarrollador de gameplay |
| 40 | 2.11 | JN.1 — Crear representación visual provisional de las notas |  | 0.25d | 2026-10-17 08:00 A | 2026-10-17 17:00 A | 39 | 100% | start no earlier than 2026-10-17 08:00 | Benjamín — Desarrollador de gameplay |
| 41 | 2.12 | JN.2 — Crear sistema que indique qué componente de la batería debe golpearse |  | 0.5d | 2026-10-17 08:00 A | 2026-10-17 17:00 A | 40 | 100% | start no earlier than 2026-10-17 08:00 | Benjamín — Desarrollador de gameplay |
| 42 | 2.13 | JW.1 — Definir ventanas temporales Perfect, Good y Miss |  | 0.25d | 2026-10-17 08:00 A | 2026-10-17 17:00 A | 39 | 100% | start no earlier than 2026-10-17 08:00 | Benjamín — Desarrollador de gameplay |
| 43 | 2.14 | JW.2 — Programar detección de golpes correctos |  | 0.5d | 2026-10-17 08:00 A | 2026-10-17 17:00 A | 42, 32 | 100% | start no earlier than 2026-10-17 08:00 | Benjamín — Desarrollador de gameplay |
| 44 | 2.17 | JW.5 — Programar detección de notas no golpeadas |  | 0d | 2026-10-17 08:00 A | 2026-10-17 17:00 A | 43 | 100% | start no earlier than 2026-10-17 08:00 | Benjamín — Desarrollador de gameplay |
| 45 | 2.18 | JP.1 — Crear sistema básico de puntuación |  | 0.5d | 2026-10-17 08:00 A | 2026-10-17 17:00 A | 43, 44 | 100% | start no earlier than 2026-10-17 08:00 | Benjamín — Desarrollador de gameplay |
| 46 | 2.20 | JP.3 — Crear cálculo de precisión porcentual del usuario |  | 0d | 2026-10-17 08:00 A | 2026-10-17 17:00 A | 45 | 100% | start no earlier than 2026-10-17 08:00 | Benjamín — Desarrollador de gameplay |
| 47 | 2.22 | JI.1 — Integrar evento DrumHit de la batería VR con el juego de ritmo |  | 0.75d | 2026-10-17 08:00 A | 2026-10-17 17:00 A | 23, 43 | 100% | start no earlier than 2026-10-17 08:00 | Benjamín — Desarrollador de gameplay |
| 48 | 3 | **E. Experiencia emocional** |  | 10d | 2026-10-16 08:00 | 2026-11-18 17:00 |  | 96% |  |  |
| 49 | 3.1 | EO.1 — Definir objetivo general de la experiencia emocional |  | 0.5d | 2026-10-18 08:00 A | 2026-10-18 17:00 A |  | 100% | start no earlier than 2026-10-18 08:00 | María — Analista e investigador |
| 50 | 3.2 | EO.2 — Definir alcance y límites del proyecto respecto al concepto de terapia |  | 0.5d | 2026-10-18 08:00 A | 2026-10-18 17:00 A | 49 | 100% | start no earlier than 2026-10-18 08:00 | María — Analista e investigador |
| 51 | 3.3 | EB.1 — Buscar bibliografía científica sobre música y regulación emocional |  | 2d | 2026-10-17 08:00 A | 2026-10-18 17:00 A |  | 100% | start no earlier than 2026-10-17 08:00 | María — Analista e investigador |
| 52 | 3.4 | EB.2 — Buscar bibliografía científica sobre percusión y expresión emocional |  | 2d | 2026-10-17 08:00 A | 2026-10-18 17:00 A |  | 100% | start no earlier than 2026-10-17 08:00 | María — Analista e investigador |
| 53 | 3.5 | EB.3 — Buscar investigaciones sobre juegos de ritmo relacionados con bienestar y expresión emocional |  | 1d | 2026-10-18 08:00 A | 2026-10-18 17:00 A |  | 100% | start no earlier than 2026-10-18 08:00 | María — Analista e investigador |
| 54 | 3.6 | EB.4 — Seleccionar estudios científicos que realmente sustentarán el proyecto |  | 1d | 2026-10-18 08:00 A | 2026-10-18 17:00 A | 51, 52, 53 | 100% | start no earlier than 2026-10-18 08:00 | María — Analista e investigador |
| 55 | 3.7 | EB.5 — Crear matriz bibliográfica de artículos, objetivo, metodología y resultados |  | 2d | 2026-10-17 08:00 A | 2026-10-18 17:00 A | 54 | 100% | start no earlier than 2026-10-17 08:00 | María — Analista e investigador |
| 56 | 3.8 | EE.1 — Definir qué emociones serán abordadas dentro de la simulación |  | 1d | 2026-10-18 08:00 A | 2026-10-18 17:00 A | 54 | 100% | start no earlier than 2026-10-18 08:00 | María — Analista e investigador |
| 57 | 3.9 | EE.2 — Definir qué actividades se relacionarán con cada emoción |  | 1d | 2026-10-18 08:00 A | 2026-10-18 17:00 A | 56 | 100% | start no earlier than 2026-10-18 08:00 | María — Analista e investigador |
| 58 | 3.10 | EE.3 — Determinar duración aproximada de una sesión |  | 0.38d | 2026-10-18 08:00 A | 2026-10-18 17:00 A | 57 | 100% | start no earlier than 2026-10-18 08:00 | María — Analista e investigador |
| 59 | 3.11 | ER — Investigar postura, comodidad y ergonomía durante actividades de percusión VR |  | 1d | 2026-10-18 08:00 A | 2026-10-18 17:00 A | 54 | 100% | start no earlier than 2026-10-18 08:00 | María — Analista e investigador |
| 60 | 3.12 | EG.1 — Redactar el guion de introducción general de la terapia |  | 1d | 2026-10-18 08:00 A | 2026-10-18 17:00 A | 50, 56 | 100% | start no earlier than 2026-10-18 08:00 | María — Analista e investigador |
| 61 | 3.13 | EG.2 — Redactar las instrucciones específicas de la actividad terapéutica |  | 1d | 2026-10-18 08:00 A | 2026-10-18 17:00 A | 57, 60 | 100% | start no earlier than 2026-10-18 08:00 | María — Analista e investigador |
| 62 | 3.14 | EF — Diseñar flujo completo de experiencia desde ingreso hasta finalización |  | 2d | 2026-10-18 08:00 A | 2026-10-19 17:00 A | 57, 60, 61, 58 | 100% | start no earlier than 2026-10-18 08:00 | María — Analista e investigador |
| 63 | 3.15 | EG.3 — Redactar el guion del tutorial introductorio |  | 1d | 2026-10-18 08:00 A | 2026-10-18 17:00 A | 61, 62 | 100% | start no earlier than 2026-10-18 08:00 | María — Analista e investigador |
| 64 | 3.16 | EI — Definir cómo se utilizarán el ritmo y la intensidad de los golpes para expresar las emociones seleccionadas |  | 1d | 2026-10-18 08:00 A | 2026-10-18 17:00 A | 56, 57 | 100% | start no earlier than 2026-10-18 08:00 | María — Analista e investigador |
| 65 | 3.17 | EG.4 — Redactar el guion de cierre de la experiencia terapéutica |  | 0.38d | 2026-10-19 08:00 A | 2026-10-19 17:00 A | 62 | 100% | start no earlier than 2026-10-19 08:00 | María — Analista e investigador |
| 66 | 3.18 | ET.1 — Redactar la fundamentación teórica de la propuesta terapéutica |  | 3d | 2026-10-16 08:00 A | 2026-10-18 17:00 A | 55, 64 | 100% | start no earlier than 2026-10-16 08:00 | María — Analista e investigador |
| 67 | 3.19 | ET.2 — Revisar y actualizar la fundamentación según el funcionamiento final del prototipo |  | 1d | 2026-11-18 08:00 A | 2026-11-18 17:00 A | 66, 137 | 100% | start no earlier than 2026-11-18 08:00 | María — Analista e investigador |

Notes:
- 67: [HECHA 2026-11-18] entregables/18_Revision_Fundamentacion.docx: las 8 afirmaciones de la fundamentacion revisadas una por una contra lo que el prototipo hace, con veredicto y con que se comprueba cada una. 3 sostenidas, 3 acotadas, 2 retiradas. De los cuatro marcos de NMT solo PSE se sostiene entero; el iso-principio se retira porque no hay implementacion de rampa de tempo ni nada que mida el tempo espontaneo del usuario. Cuatro consecuencias para QI.3 y la fundamentacion reescrita en un parrafo. La original no se edita: se conserva en docs/investigacion/evidencia-musicoterapia.md. 12 pruebas en scripts/test_fundamentacion.py

| ID | WBS | Task | Duration | Start | Finish | Predecessors | Complete | Constraint | Resources |
| --- | --- | --- | --- | --- | --- | --- | --- | --- | --- |
| 68 | 4 | **M. Música** | 9.62d | 2026-10-17 08:00 | 2026-10-18 17:00 |  | 100% |  |  |
| 69 | 4.6 | ML.1 — Determinar si se utilizará música original, libre de derechos o licenciada | 0.5d | 2026-10-18 08:00 A | 2026-10-18 17:00 A |  | 100% | start no earlier than 2026-10-18 08:00 | Javier — Compositor y diseñador musical |
| 70 | 4.7 | ML.2 — Investigar licencias de las pistas o recursos musicales considerados | 1d | 2026-10-18 08:00 A | 2026-10-18 17:00 A | 69 | 100% | start no earlier than 2026-10-18 08:00 | Javier — Compositor y diseñador musical |
| 71 | 4.8 | MP.1 — Crear o seleccionar primera pista musical de prueba | 2d | 2026-10-17 08:00 A | 2026-10-18 17:00 A | 55, 69, 59 | 100% | start no earlier than 2026-10-17 08:00 | Javier — Compositor y diseñador musical |
| 72 | 4.9 | MP.2 — Determinar BPM exacto de la primera pista | 0d | 2026-10-18 08:00 A | 2026-10-18 17:00 A | 71 | 100% | start no earlier than 2026-10-18 08:00 | Javier — Compositor y diseñador musical |
| 73 | 4.10 | MP.3 — Identificar estructura musical de la primera pista | 0d | 2026-10-18 08:00 A | 2026-10-18 17:00 A | 71 | 100% | start no earlier than 2026-10-18 08:00 | Javier — Compositor y diseñador musical |
| 74 | 4.11 | MB.1 — Crear patrón básico de batería para la primera pista | 1.38d | 2026-10-18 08:00 A | 2026-10-18 17:00 A | 73 | 100% | start no earlier than 2026-10-18 08:00 | Javier — Compositor y diseñador musical |
| 75 | 4.14 | MB.4 — Convertir patrón rítmico en información utilizable para el beatmap | 0.62d | 2026-10-18 08:00 A | 2026-10-18 17:00 A | 74, 72 | 100% | start no earlier than 2026-10-18 08:00 | Javier — Compositor y diseñador musical |
| 76 | 5 | **S. Sonido** | 10.38d | 2026-09-15 08:00 | 2026-10-19 17:00 |  | 100% |  |  |
| 77 | 5.1 | SP.1 — Crear lista de todos los sonidos necesarios para el proyecto | 0.38d | 2026-09-16 08:00 A | 2026-09-16 17:00 A |  | 100% | start no earlier than 2026-09-16 08:00 | Christian — Diseñador de audio |
| 78 | 5.3 | SB.1 — Buscar sonido de kick | 0d | 2026-09-16 08:00 A | 2026-09-16 17:00 A | 77 | 100% | start no earlier than 2026-09-16 08:00 | Christian — Diseñador de audio |
| 79 | 5.4 | SB.2 — Buscar sonido de snare | 0d | 2026-09-16 08:00 A | 2026-09-16 17:00 A | 77 | 100% | start no earlier than 2026-09-16 08:00 | Christian — Diseñador de audio |
| 80 | 5.5 | SB.3 — Buscar sonidos de toms | 0d | 2026-09-16 08:00 A | 2026-09-16 17:00 A | 77 | 100% | start no earlier than 2026-09-16 08:00 | Christian — Diseñador de audio |
| 81 | 5.6 | SB.4 — Buscar sonidos de hi-hat abierto y cerrado | 0d | 2026-09-16 08:00 A | 2026-09-16 17:00 A | 77 | 100% | start no earlier than 2026-09-16 08:00 | Christian — Diseñador de audio |
| 82 | 5.7 | SB.5 — Buscar sonidos de crash y ride | 0d | 2026-10-19 08:00 A | 2026-10-19 17:00 A | 77 | 100% | start no earlier than 2026-10-19 08:00 | Christian — Diseñador de audio |
| 83 | 5.8 | SB.6 — Seleccionar tres niveles de intensidad para cada componente principal | 2.75d | 2026-09-15 08:00 A | 2026-09-16 17:00 A | 78, 79, 80, 81, 82 | 100% | start no earlier than 2026-09-15 08:00 | Christian — Diseñador de audio |
| 84 | 5.9 | SE.1 — Editar inicio y final de cada muestra para evitar retrasos | 1.25d | 2026-09-16 08:00 A | 2026-09-16 17:00 A | 83 | 100% | start no earlier than 2026-09-16 08:00 | Christian — Diseñador de audio |
| 85 | 5.11 | SE.3 — Normalizar volumen de las muestras de batería | 1d | 2026-09-16 08:00 A | 2026-09-16 17:00 A | 84 | 100% | start no earlier than 2026-09-16 08:00 | Christian — Diseñador de audio |
| 86 | 5.12 | SE.4 — Exportar sonidos en formato apropiado para Unity | 0d | 2026-09-16 08:00 A | 2026-09-16 17:00 A | 85, 83 | 100% | start no earlier than 2026-09-16 08:00 | Christian — Diseñador de audio |
| 87 | 5.15 | SI.1 — Integrar sonidos de batería con sistema DrumHit | 0.75d | 2026-09-16 08:00 A | 2026-09-16 17:00 A | 23, 86 | 100% | start no earlier than 2026-09-16 08:00 | Christian — Diseñador de audio |
| 88 | 5.16 | SI.2 — Asignar sonidos diferentes según intensidad del golpe | 1d | 2026-09-16 08:00 A | 2026-09-16 17:00 A | 19, 87 | 100% | start no earlier than 2026-09-16 08:00 | Christian — Diseñador de audio |
| 89 | 5.17 | SI.3 — Configurar volumen espacial de la batería dentro del entorno VR | 1d | 2026-09-17 08:00 A | 2026-09-17 17:00 A | 87 | 100% | start no earlier than 2026-09-17 08:00 | Christian — Diseñador de audio |
| 90 | 5.18 | SI.4 — Medir retraso perceptible entre impacto y reproducción del sonido | 1d | 2026-10-17 08:00 A | 2026-10-17 17:00 A | 87 | 100% | start no earlier than 2026-10-17 08:00 | Christian — Diseñador de audio |
| 91 | 6 | **I. Interfaz / UX/UI** | 7.62d | 2026-10-17 08:00 | 2026-10-21 17:00 |  | 55% |  |  |
| 92 | 6.1 | IM.1 — Definir mapa completo de pantallas de la aplicación | 1d | 2026-10-19 08:00 A | 2026-10-19 17:00 A | 64, 65 | 100% | start no earlier than 2026-10-19 08:00 | Sarai — Diseñador de interacción UX-XR |
| 93 | 6.2 | IM.2 — Definir navegación entre menú, experiencia guiada, juego y modo libre | 0.75d | 2026-10-19 08:00 A | 2026-10-19 17:00 A | 92 | 100% | start no earlier than 2026-10-19 08:00 | Sarai — Diseñador de interacción UX-XR |
| 94 | 6.3 | IW.1 — Crear wireframe del menú principal | 0.75d | 2026-10-19 08:00 A | 2026-10-19 17:00 A | 93 | 100% | start no earlier than 2026-10-19 08:00 | Sarai — Diseñador de interacción UX-XR |
| 95 | 6.4 | IW.2 — Crear wireframe de selección de modo | 0.75d | 2026-10-19 08:00 A | 2026-10-19 17:00 A | 93 | 100% | start no earlier than 2026-10-19 08:00 | Sarai — Diseñador de interacción UX-XR |
| 96 | 6.5 | IW.3 — Crear wireframe de selección emocional | 0.75d | 2026-10-19 08:00 A | 2026-10-19 17:00 A | 61, 93 | 100% | start no earlier than 2026-10-19 08:00 | Sarai — Diseñador de interacción UX-XR |
| 97 | 6.7 | IW.5 — Crear wireframe de pantalla previa al juego | 0.75d | 2026-10-19 08:00 A | 2026-10-19 17:00 A | 93 | 100% | start no earlier than 2026-10-19 08:00 | Sarai — Diseñador de interacción UX-XR |
| 98 | 6.16 | IG.1 — Diseñar indicadores visuales de Perfect, Good y Miss | 1d | 2026-10-17 08:00 A | 2026-10-17 17:00 A | 55 | 100% | start no earlier than 2026-10-17 08:00 | Sarai — Diseñador de interacción UX-XR |
| 99 | 6.17 | IG.2 — Diseñar representación definitiva de las notas del juego | 2d | 2026-10-21 08:00 A | 2026-10-21 17:00 A | 55, 40 | 100% | start no earlier than 2026-10-21 08:00 | Sarai — Diseñador de interacción UX-XR |
| 100 | 6.18 | IG.3 — Diseñar indicadores para señalar el tambor que debe golpearse | 0.75d | 2026-10-21 08:00 A | 2026-10-21 17:00 A | 99 | 100% | start no earlier than 2026-10-21 08:00 | Sarai — Diseñador de interacción UX-XR |
| 101 | 6.20 | IT.2 — Diseñar tutorial para explicar cómo seguir el ritmo | 0d | 2026-10-20 08:00 A | 2026-10-20 17:00 A | 43 | 100% | start no earlier than 2026-10-20 08:00 | Sarai — Diseñador de interacción UX-XR |
| 102 | 6.21 | IT.3 — Diseñar tutorial para explicar la intensidad de los golpes | 1d | 2026-10-20 08:00 A | 2026-10-20 17:00 A | 19 | 100% | start no earlier than 2026-10-20 08:00 | Sarai — Diseñador de interacción UX-XR |
| 103 | 6.22 | IT.4 — Implementar flujo del tutorial completo | 2d | 2026-10-19 08:00 A | 2026-10-20 17:00 A | 102, 63 | 100% | start no earlier than 2026-10-19 08:00 | Sarai — Diseñador de interacción UX-XR |
| 104 | 6.24 | II.2 — Implementar menú principal dentro de Unity | 0.75d | 2026-10-20 08:00 A | 2026-10-20 17:00 A | 55, 95, 96, 62, 93, 97 | 100% | start no earlier than 2026-10-20 08:00 | Sarai — Diseñador de interacción UX-XR |
| 105 | 6.25 | II.3 — Implementar interacción con botones utilizando controlador VR | 0d | 2026-10-20 08:00 A | 2026-10-20 17:00 A | 9, 104 | 100% | start no earlier than 2026-10-20 08:00 | Sarai — Diseñador de interacción UX-XR |
| 106 | 6.28 | II.6 — Implementar pantalla de resultados | 1.5d | 2026-10-20 08:00 A | 2026-10-20 17:00 A | 45, 93, 46 | 100% | start no earlier than 2026-10-20 08:00 | Sarai — Diseñador de interacción UX-XR |
| 107 | 6.29 | IR.1 — Revisar legibilidad de textos dentro del visor VR | 0.75d | 2026-10-20 08:00 A | 2026-10-20 17:00 A | 105 | 100% | start no earlier than 2026-10-20 08:00 | Sarai — Diseñador de interacción UX-XR |
| 108 | 6.30 | IR.2 — Revisar tamaño, distancia y posición de paneles | 0d | 2026-10-20 08:00 A | 2026-10-20 17:00 A | 107 | 100% | start no earlier than 2026-10-20 08:00 | Sarai — Diseñador de interacción UX-XR |

Notes:
- 82: [HECHA 2026-10-19] Crash y Platillo (ride) con cinco capas de velocidad cada uno, del kit AVL Drumkits Red Zeppelin bajo CC BY-SA 3.0. El crash entro como septima pieza el 19-oct: Assets/Audio/Piezas/Crash.asset y Platillo.asset
- 101: [HECHA 2026-10-20] PasoSeguirPulso con EcoRitmico: 8 notas, 3 aciertos necesarios, ventanas de 25 y 60 ms. Rediseñado como acompañamiento el 20-oct porque la version anterior callaba el metronomo al empezar el turno del usuario y pedia reproducir de memoria: fallaba 0 de 9 corridas. Pruebas en TutorialPasosTests y EcoRitmicoTests
- 102: [HECHA 2026-10-20] PasoIntensidades: exige los tres niveles suave, medio y fuerte, con el umbral de velocidad en cada pad y no global, porque un bombo se golpea mas fuerte que un hi-hat. Assets/Scripts/Tutorial/PasoIntensidades.cs
- 103: [HECHA 2026-10-20] TutorialRunner conduce los cuatro pasos con baqueta fantasma y rotulo, y FlujoApp lo arranca desde el menu y lleva a resultados. RegistroTutorial vuelca a JSON los intentos, el tiempo por paso, el tiempo hasta el primer golpe y el desfase de cada golpe: es la evidencia de la medida de exito 6
- 104: [HECHA 2026-10-20] ConstruirMenu levanta TOCAR, TUTORIAL y SALIR como pads con disco y rotulo, cableando los diez campos de FlujoApp. EscenaCompletaTests comprueba el montaje entero, incluido que el marcador se apague fuera de Tocando
- 105: [HECHA 2026-10-20] Los botones se golpean con las baquetas por el MISMO camino de deteccion que el kit: StickTracker los lleva en su lista y PadDeMenu filtra que el golpe venga de una mano. No hay un segundo mecanismo de entrada que mantener
- 106: [HECHA 2026-10-20] PanelResultados y TextoResultados: el resultado dicho en palabras y no solo en cifras. Pruebas en TextoResultadosTests
- 107: [HECHA 2026-10-20] Tamaños MEDIDOS sobre la escena, no estimados. JudgePopup en 0.00556, que con el factor 36 de TMP da 0.200 de cuerpo, el mismo que el Indicador validado en el visor; el rotulo del tutorial en 0.85, escalado desde el 0.50 validado al pasar de 0.50 m de los ojos a 0.87; marcador e Indicador con autoajuste. LosTamanosDeTextoSonLosValidados los fija, porque tres correcciones seguidas no habian llegado nunca a la escena
- 108: [HECHA 2026-10-20] Tres posiciones corregidas con medida. El panel del marcador se ancla al kit en coordenadas de MUNDO tras encontrarse a dieciseis metros por heredar una posicion local; el rotulo del tutorial pasa del bombo -31 cm fuera del eje, 16 mas alto y 45 cm mas cerca- al punto exacto del marcador; y el promedio que situa el panel deja de contar los botones del menu. Con sus pruebas de escena

| ID | WBS | Task | Type | Duration | Start | Finish | Predecessors | Complete | Constraint | Resources |
| --- | --- | --- | --- | --- | --- | --- | --- | --- | --- | --- |
| 109 | 7 | **A. Entorno 3D y assets** |  | 6.5d | 2026-10-17 08:00 | 2026-10-18 17:00 |  | 100% |  |  |
| 110 | 7.9 | AA.3 — Buscar assets de entorno compatibles con el estilo elegido |  | 2.38d | 2026-10-17 08:00 A | 2026-10-18 17:00 A | 55, 54, 56, 6 | 100% | start no earlier than 2026-10-17 08:00 | Kimberly — Artista y modelador 3D |
| 111 | 7.10 | AA.4 — Revisar licencias de los assets seleccionados |  | 1.25d | 2026-10-18 08:00 A | 2026-10-18 17:00 A | 110 | 100% | start no earlier than 2026-10-18 08:00 | Kimberly — Artista y modelador 3D |
| 112 | 7.17 | AP.1 — Crear primera composición del escenario en Unity |  | 1.38d | 2026-10-17 08:00 A | 2026-10-18 17:00 A | 110, 111 | 100% | start no earlier than 2026-10-17 08:00 | Kimberly — Artista y modelador 3D |
| 113 | 7.20 | AL.1 — Configurar iluminación inicial considerando la paleta de colores establecida |  | 1.12d | 2026-10-18 08:00 A | 2026-10-18 17:00 A | 112, 55, 54, 56 | 100% | start no earlier than 2026-10-18 08:00 | Kimberly — Artista y modelador 3D |
| 114 | 7.21 | AL.2 — Configurar iluminación definitiva y ambiente visual |  | 0.88d | 2026-10-18 08:00 A | 2026-10-18 17:00 A | 113 | 100% | start no earlier than 2026-10-18 08:00 | Kimberly — Artista y modelador 3D |
| 115 | 7.24 | AS — Crear límites visuales de seguridad del espacio de interacción |  | 0.5d | 2026-10-18 08:00 A | 2026-10-18 17:00 A | 112, 59 | 100% | start no earlier than 2026-10-18 08:00 | Kimberly — Artista y modelador 3D |
| 116 | 7.29 | AO.5 — Evaluar FPS del escenario en el visor objetivo |  | 1d | 2026-10-18 08:00 A | 2026-10-18 17:00 A | 114 | 100% | start no earlier than 2026-10-18 08:00 | Kimberly — Artista y modelador 3D |
| 117 | 8 | **Q. QA, documentación y gestión** |  | 17d | 2026-09-02 08:00 | 2026-11-26 17:00 |  | 43% |  |  |
| 118 | 8.1 | QP.1 — Definir alcance general del proyecto |  | 1d | 2026-09-03 08:00 A | 2026-09-03 17:00 A |  | 100% | start no earlier than 2026-09-03 08:00 | Diana — Gerente de proyecto |
| 119 | 8.2 | QP.2 — Definir objetivos generales y específicos |  | 1d | 2026-09-03 08:00 A | 2026-09-03 17:00 A | 118 | 100% | start no earlier than 2026-09-03 08:00 | Diana — Gerente de proyecto |
| 120 | 8.3 | QP.3 — Identificar entregables principales del proyecto |  | 0.38d | 2026-09-03 08:00 A | 2026-09-03 17:00 A | 118, 119 | 100% | start no earlier than 2026-09-03 08:00 | Diana — Gerente de proyecto |
| 121 | 8.4 | QP.4 — Elaborar EDT/WBS completa de tareas |  | 2d | 2026-09-02 08:00 A | 2026-09-03 17:00 A | 120 | 100% | start no earlier than 2026-09-02 08:00 | Diana — Gerente de proyecto |
| 122 | 8.5 | QP.5 — Asignar responsables principales para cada tarea |  | 0.75d | 2026-09-03 08:00 A | 2026-09-03 17:00 A | 121 | 100% | start no earlier than 2026-09-03 08:00 | Diana — Gerente de proyecto |
| 123 | 8.6 | QP.6 — Establecer dependencias entre tareas |  | 0.75d | 2026-09-03 08:00 A | 2026-09-03 17:00 A | 121 | 100% | start no earlier than 2026-09-03 08:00 | Diana — Gerente de proyecto |
| 124 | 8.7 | QP.7 — Crear cronograma inicial del proyecto |  | 0.75d | 2026-09-09 08:00 A | 2026-09-09 17:00 A | 121, 123, 122 | 100% | start no earlier than 2026-09-09 08:00 | Diana — Gerente de proyecto |
| 125 | 8.8 | QP.8 — Crear diagrama de Gantt |  | 0.75d | 2026-09-09 08:00 A | 2026-09-09 17:00 A | 124 | 100% | start no earlier than 2026-09-09 08:00 | Diana — Gerente de proyecto |
| 126 | 8.9 | QP.9 — Identificar ruta crítica del proyecto |  | 1d | 2026-09-09 08:00 A | 2026-09-09 17:00 A | 125 | 100% | start no earlier than 2026-09-09 08:00 | Diana — Gerente de proyecto |
| 127 | 8.10 | QG.1 — Crear lista de riesgos técnicos, académicos y de tiempo |  | 0.75d | 2026-09-18 08:00 A | 2026-09-18 17:00 A | 124, 126 | 100% | start no earlier than 2026-09-18 08:00 | Diana — Gerente de proyecto |
| 128 | 8.11 | QG.2 — Definir acciones de mitigación para cada riesgo |  | 0.5d | 2026-09-18 08:00 A | 2026-09-18 17:00 A | 127 | 100% | start no earlier than 2026-09-18 08:00 | Diana — Gerente de proyecto |
| 129 | 8.12 | QR.1 — Definir requisitos funcionales de la simulación |  | 2d | 2026-09-02 08:00 A | 2026-09-03 17:00 A | 118 | 100% | start no earlier than 2026-09-02 08:00 | Diana — Analista e investigador |
| 130 | 8.13 | QR.2 — Definir requisitos no funcionales |  | 1d | 2026-09-03 08:00 A | 2026-09-03 17:00 A | 129 | 100% | start no earlier than 2026-09-03 08:00 | Diana — Analista e investigador |
| 131 | 8.14 | QR.3 — Crear criterios de aceptación para cada requisito |  | 2d | 2026-09-02 08:00 A | 2026-09-03 17:00 A | 129, 130 | 100% | start no earlier than 2026-09-02 08:00 | Diana — Analista e investigador |
| 132 | 8.15 | QR.4 — Crear matriz de trazabilidad entre requisitos y funcionalidades |  | 1d | 2026-09-21 08:00 A | 2026-09-21 17:00 A | 131 | 100% | start no earlier than 2026-09-21 08:00 | Diana — Analista e investigador |
| 133 | 8.16 | QE.1 — Establecer formato para documentar errores |  | 0.38d | 2026-09-18 08:00 A | 2026-09-18 17:00 A |  | 100% | start no earlier than 2026-09-18 08:00 | Diana — Analista de pruebas (QA) |
| 134 | 8.17 | QT.1 — Crear plan de pruebas de batería VR |  | 1d | 2026-09-18 08:00 A | 2026-09-18 17:00 A | 14, 132 | 100% | start no earlier than 2026-09-18 08:00 | Diana — Analista de pruebas (QA) |
| 135 | 8.22 | QT.6 — Realizar pruebas unitarias de batería |  | 1d | 2026-10-17 08:00 A | 2026-10-17 17:00 A | 27, 134 | 100% | start no earlier than 2026-10-17 08:00 | Diana — Analista de pruebas (QA) |
| 136 | 8.23 | QT.7 — Realizar pruebas del sistema de ritmo |  | 0d | 2026-10-17 08:00 A | 2026-10-17 17:00 A | 74, 45, 94, 64, 103, 36, 41, 47, 18, 43, 98, 77, 39, 31, 132 | 100% | start no earlier than 2026-10-17 08:00 | Diana — Analista de pruebas (QA) |
| 137 | 8.24 | QT.8 — Realizar pruebas con usuarios del prototipo integrado |  | 2d | 2026-11-18 08:00 | 2026-11-19 17:00 |  |  | start no earlier than 2026-11-18 08:00 | Diana — Analista de pruebas (QA) |
| 138 | 8.25 | QE.2 — Registrar errores, observaciones y sugerencias de usuarios |  | 1d | 2026-11-19 08:00 | 2026-11-19 17:00 | 137, 133 |  | start no earlier than 2026-11-19 08:00 | Diana — Analista de pruebas (QA) |
| 139 | 8.26 | QE.3 — Clasificar errores por gravedad y prioridad |  | 0d | 2026-11-20 08:00 | 2026-11-20 17:00 | 138 |  | start no earlier than 2026-11-20 08:00 | Diana — Analista de pruebas (QA) |
| 140 | 8.27 | QE.4 — Asignar errores a las áreas correspondientes |  | 0d | 2026-11-20 08:00 | 2026-11-20 17:00 | 139 |  | start no earlier than 2026-11-20 08:00 | Diana — Analista de pruebas (QA) |
| 141 | 8.28 | QE.5 — Verificar corrección de errores críticos |  | 0.38d | 2026-11-23 08:00 | 2026-11-23 17:00 | 140, 137 |  | start no earlier than 2026-11-23 08:00 | Diana — Analista de pruebas (QA) |
| 142 | 8.29 | QV.1 — Realizar prueba completa desde inicio hasta final de una sesión |  | 0.75d | 2026-11-24 08:00 | 2026-11-24 17:00 | 141 |  | start no earlier than 2026-11-24 08:00 | Diana — Analista de pruebas (QA) |
| 143 | 8.30 | QV.2 — Evaluar estabilidad y presencia de cierres inesperados |  | 0.12d | 2026-11-24 08:00 | 2026-11-24 17:00 | 142 |  | start no earlier than 2026-11-24 08:00 | Diana — Analista de pruebas (QA) |
| 144 | 8.31 | QV.3 — Medir FPS del proyecto en el visor objetivo |  | 0.62d | 2026-10-18 08:00 A | 2026-10-18 17:00 A | 114, 142 | 100% | start no earlier than 2026-10-18 08:00 | Diana — Analista de pruebas (QA) |
| 145 | 8.32 | QV.4 — Evaluar latencia entre golpe físico, sonido y detección |  | 1d | 2026-10-17 08:00 A | 2026-10-17 17:00 A | 28, 90, 47 | 100% | start no earlier than 2026-10-17 08:00 | Diana — Analista de pruebas (QA) |
| 146 | 8.33 | QV.5 — Evaluar comodidad de la experiencia VR |  | 1d | 2026-11-19 08:00 | 2026-11-19 17:00 | 137 |  | start no earlier than 2026-11-19 08:00 | Diana — Analista de pruebas (QA) |
| 147 | 8.34 | QC.1 — Registrar versiones importantes del proyecto | milestone | 0d | 2026-11-10 08:00 A | 2026-11-10 08:00 A | 3 | 100% | start no earlier than 2026-11-10 08:00 | Diana — Gerente de proyecto |
| 148 | 8.35 | QC.2 — Documentar avances semanales |  | 0.38d | 2026-10-21 08:00 A | 2026-10-21 17:00 A |  | 100% | start no earlier than 2026-10-21 08:00 | Diana — Gerente de proyecto |
| 149 | 8.36 | QC.3 — Mantener actualizada la bibliografía del proyecto |  | 0.38d | 2026-10-18 08:00 A | 2026-10-18 17:00 A | 51 | 100% | start no earlier than 2026-10-18 08:00 | Diana — Gerente de proyecto |
| 150 | 8.37 | QC.4 — Mantener registro de assets y sus licencias |  | 0d | 2026-10-18 08:00 A | 2026-10-18 17:00 A | 6 | 100% | start no earlier than 2026-10-18 08:00 | Diana — Gerente de proyecto |
| 151 | 8.38 | QC.5 — Mantener registro de música y licencias utilizadas |  | 0d | 2026-10-18 08:00 A | 2026-10-18 17:00 A | 70 | 100% | start no earlier than 2026-10-18 08:00 | Diana — Gerente de proyecto |
| 152 | 8.47 | QM.1 — Elaborar manual básico de usuario |  | 1.12d | 2026-11-17 08:00 A | 2026-11-18 17:00 A | 142 | 100% | start no earlier than 2026-11-17 08:00 | Diana — Redactor técnico |
| 153 | 8.48 | QM.2 — Elaborar manual técnico de instalación y ejecución |  | 0.12d | 2026-11-18 08:00 A | 2026-11-18 17:00 A | 142 | 100% | start no earlier than 2026-11-18 08:00 | Diana — Redactor técnico |
| 154 | 8.51 | QI.1 — Analizar resultados obtenidos durante las pruebas |  | 2d | 2026-11-19 08:00 | 2026-11-20 17:00 | 137, 138 |  | start no earlier than 2026-11-19 08:00 | Diana — Analista e investigador |
| 155 | 8.52 | QI.2 — Redactar apartado de resultados del proyecto |  | 2d | 2026-11-20 08:00 | 2026-11-23 17:00 | 154 |  | start no earlier than 2026-11-20 08:00 | Diana — Analista e investigador |
| 156 | 8.53 | QI.3 — Redactar conclusiones y limitaciones |  | 1d | 2026-11-23 08:00 | 2026-11-23 17:00 | 155 |  | start no earlier than 2026-11-23 08:00 | Diana — Analista e investigador |
| 157 | 8.54 | QI.4 — Integrar todas las secciones del informe final |  | 2.5d | 2026-11-24 08:00 | 2026-11-25 17:00 | 66, 23, 74, 45, 94, 64, 103, 36, 41, 47, 18, 43, 98, 77, 39, 155, 156, 67, 128, 148, 93, 88, 116, 75, 108 |  | start no earlier than 2026-11-24 08:00 | Diana — Analista e investigador |
| 158 | 8.55 | QI.5 — Revisar redacción, ortografía, referencias y formato |  | 2.38d | 2026-11-25 08:00 | 2026-11-26 17:00 | 157, 149, 150, 151 |  | start no earlier than 2026-11-25 08:00 | Diana — Analista e investigador |
| 159 | 8.56 | QB.1 — Generar build candidata a versión final |  | 1.38d | 2026-11-18 08:00 A | 2026-11-18 17:00 A | 141, 143, 144, 145, 146, 147 | 100% | start no earlier than 2026-11-18 08:00 | Diana — Desarrollador de realidad virtual |
| 160 | 8.57 | QB.2 — Probar build final en el visor VR objetivo |  | 1d | 2026-11-18 08:00 | 2026-11-18 17:00 | 159 |  | start no earlier than 2026-11-18 08:00 | Diana — Desarrollador de realidad virtual |
| 161 | 8.58 | QB.3 — Corregir errores críticos encontrados en build final |  | 0.12d | 2026-11-18 08:00 | 2026-11-18 17:00 | 160 |  | start no earlier than 2026-11-18 08:00 | Diana — Desarrollador de realidad virtual |
| 162 | 8.59 | QB.4 — Generar versión definitiva del videojuego |  | 0d | 2026-11-18 08:00 | 2026-11-18 17:00 | 161 |  | start no earlier than 2026-11-18 08:00 | Diana — Desarrollador de realidad virtual |
| 163 | 8.60 | QX — Preparar presentación y demostración final del proyecto |  | 1.88d | 2026-11-25 08:00 | 2026-11-26 17:00 | 157, 162, 152, 153, 142, 158 |  | start no earlier than 2026-11-25 08:00 | Diana — Director de proyecto |

Notes:
- 110: [HECHA 2026-10-18] Assets elegidos y copiados: Stage y Stadium Seats de Poly Pizza, skybox de Kenney, arbol y textura de tierra de Fantasy Forest
- 111: [HECHA 2026-10-18] Licencia de cada asset verificada en su pagina de origen. Dos regimenes distintos: CC0/CC BY 3.0 y Standard Unity Asset Store EULA
- 112: [HECHA 2026-10-18] Escena compuesta por script: Assets/Editor/ConstruirBosque.cs. Claro de bosque con 20 arboles en tres anillos y suelo texturizado
- 114: [HECHA 2026-10-18] Iluminacion y ambiente definidos: sol bajo calido o luna rasante, ambiente de tres tonos, niebla exponencial y sombras suaves
- 115: [HECHA 2026-10-18] LimiteSeguro dibuja el perimetro del espacio con radio calculado del pad mas lejano mas 0.5 m de margen. Verificado en el visor durante la corrida de FPS del 18-oct: el circulo se ve y el radio se siente adecuado. La medida 10 habla de lo que reportan los usuarios, asi que se cierra con observacion, no con un numero del sistema
- 116: [HECHA 2026-10-18] Medido en el visor sobre el entorno definitivo: 12949 fotogramas, 12946 en vsync (100.0 %), 3 vsync perdidos (0.02 %) contra un criterio del 5 %. Evidencia en entregables/mediciones/fps_20261018_060703.json
- 128: [HECHA 2026-09-18] Los 18 riesgos de scripts/pruebas.py llevan estrategia y accion de respuesta: 0 sin respuesta. Publicados en 04_Planes_Costos_Calidad_Riesgos.docx (11.1 a 11.7) y en entregables/pmbok/11_Riesgos.docx
- 134: [HECHA 2026-09-18] Plan de pruebas con 30 casos: 14 de caja blanca y 16 de caja negra en scripts/pruebas.py, con su criterio de aceptacion. Publicados en 04_Planes_Costos_Calidad_Riesgos.docx (8.1 a 8.3) y en entregables/pmbok/08_Calidad.docx
- 135: [HECHA 2026-10-17] 42 pruebas EditMode de bateria: CrossSolver 7, DrumPad 6, PadVisual 7, SampleSelector 8, HitIntensity 5, KitLayout 4, DrumHitFanout 2, EscenaRig 3
- 136: [HECHA 2026-10-17] 52 pruebas EditMode de ritmo: SessionStats 11, MusicalTime 8, TempoMap 8, HitJudge 7, HitRing 6, NoteMatcher 6, JuegoDeRitmo 6
- 144: [HECHA 2026-10-18] Misma corrida que AO.5, desde QA. 71.9 fps de media, mediana y p99 en 13.9 ms, que es el intervalo exacto de vsync a 72 Hz
- 145: [HECHA 2026-10-17] Hito Go/No-Go del acta, medido con el protocolo del clic fisico: p90 de +4.07 ms dentro de la ventana de -10 a +25 ms. Ocho corridas en entregables/mediciones/latencia_20261017_*.json. El desfase negativo es valido: la prediccion del plano armado adelanta el sonido
- 147: [HECHA 2026-11-10] Registro de versiones en tres lugares: historial de los dos repositorios (121 y 136 commits), entregables/superados/ con 11 versiones anteriores conservadas, y las tablas de evolucion de CLAUDE.md para presupuesto, red y enfoque
- 150: [HECHA 2026-10-18] Registro de assets y licencias en Assets/Entorno/ATRIBUCION.txt y entregables/ATRIBUCION_entorno.txt, con las restricciones de cada EULA
- 152: [HECHA 2026-11-18] entregables/15_Manual_Usuario.docx, 8 secciones escritas para el participante de QT.8: ponerse el visor, el aviso de malestar y que se puede parar, los cuatro pasos del tutorial, la fila de pads con el rotulo que cada uno dice de verdad, elegir ritmo y velocidad, los aros y el veredicto, modo libre, los resultados en palabras, siete problemas por sintoma, y que se guarda y que no. Los rotulos salen del repo Unity, no se teclean. 28 pruebas en scripts/test_manuales.py
- 153: [HECHA 2026-10-21] BateriaVR/README.md: version de Unity, los dos paquetes del Asset Store que faltan al clonar y como reponerlos, orden de los constructores de escena, como correr las pruebas en batchmode, compilar e instalar el APK con quest.sh y como depurar en el visor. Es el manual tecnico de instalacion y ejecucion
- 159: [HECHA 2026-11-18] Builds/bateria.apk, 65.1 MB, compilado el 18-nov 12:10 con BuildAPK.DesdeLinea en batchmode. Android, IL2CPP, ARM64, Vulkan, URP movil, paquete mx.uanl.fime.bateriavr version 0.1.0. XR verificado DENTRO del APK: boot.config lleva xrsdk-pre-init-library=UnityOpenXR y el paquete incluye libUnityOpenXR.so, libopenxr_loader.so y el manifiesto del subsistema. ProjectSettings quedo intacto tras compilar, que es lo que la guarda nueva garantiza. Probarla en el visor es QB.2 y sigue pendiente
