# Simulación de batería en realidad virtual con enfoque de musicoterapia

Schedule from MS Project XML, 2026-09-01 to 2026-11-10.
UANL FIME

## Calendars

- Estándar: Mon-Fri 08:00-12:00, 13:00-17:00; Sat-Sun off. Exceptions (off unless hours are given): 2026-09-16.

## Resources

| Resource | Rate |
| --- | --- |
| Director de proyecto | 375 |
| Gerente de proyecto | 277 |
| Coordinador | 173 |
| Desarrollador de realidad virtual | 260 |
| Diseñador de interacción / UX-XR | 219 |
| Artista y modelador 3D | 185 |
| Diseñador de audio | 162 |
| Analista de métricas | 196 |
| Asesor terapéutico externo | 900 |

## Schedule

| ID | WBS | Task | Duration | Start | Finish | Predecessors | Constraint | Resources |
| --- | --- | --- | --- | --- | --- | --- | --- | --- |
| 1 | 1 | **1. Gestión del proyecto** | 50d | 2026-09-01 | 2026-11-10 |  |  |  |
| 2 | 1.1 | Acta constitutiva | 2d | 2026-09-01 | 2026-09-02 |  | start no earlier than 2026-09-01 | Gerente de proyecto |
| 3 | 1.2 | Plan de alcance y estructura de desglose del trabajo | 3d | 2026-09-03 | 2026-09-07 | 2 | start no earlier than 2026-09-03 | Gerente de proyecto |
| 4 | 1.3 | Cronograma y línea base | 2d | 2026-09-08 | 2026-09-09 | 3 | start no earlier than 2026-09-08 | Gerente de proyecto |
| 5 | 1.4 | Registro de riesgos | 2d | 2026-09-10 | 2026-09-11 | 4 | start no earlier than 2026-09-10 | Gerente de proyecto; Director de proyecto |
| 6 | 1.5 | Seguimiento y control del proyecto | 50d | 2026-09-01 | 2026-11-10 |  | start no earlier than 2026-09-01 | Coordinador; Gerente de proyecto |
| 7 | 1.6 | Cierre y presentación final | 1d | 2026-11-10 | 2026-11-10 | 49SS+1d | start no earlier than 2026-11-10 | Director de proyecto; Coordinador |
| 8 | 2 | **2. Fundamentación terapéutica** | 34d | 2026-09-01 | 2026-10-19 |  |  |  |
| 9 | 2.1 | Investigación de musicoterapia y percusión | 9d | 2026-09-01 | 2026-09-11 |  | start no earlier than 2026-09-01 | Analista de métricas |
| 10 | 2.2 | Definición del perfil y gestión del asesor | 5d | 2026-09-01 | 2026-09-07 |  | start no earlier than 2026-09-01 | Coordinador |
| 11 | 2.3 | Confirmación y contratación del asesor | 3d | 2026-09-08 | 2026-09-10 | 10 | start no earlier than 2026-09-08 | Director de proyecto |
| 12 | 2.4 | Diseño de rutinas rítmicas terapéuticas | 6d | 2026-09-14 | 2026-09-22 | 11, 9 | start no earlier than 2026-09-14 | Asesor terapéutico externo; Analista de métricas |
| 13 | 2.5 | Validación de rutinas con el asesor | 4d | 2026-09-23 | 2026-09-28 | 12 | start no earlier than 2026-09-23 | Asesor terapéutico externo |
| 14 | 2.6 | Definición de métricas motrices | 6d | 2026-09-22 | 2026-09-29 | 12SS+5d | start no earlier than 2026-09-22 | Analista de métricas |
| 15 | 2.7 | Validación de métricas con el asesor | 4d | 2026-09-30 | 2026-10-05 | 14 | start no earlier than 2026-09-30 | Asesor terapéutico externo |
| 16 | 2.8 | Protocolo de sesión y consentimiento informado | 6d | 2026-10-06 | 2026-10-13 | 15 | start no earlier than 2026-10-06 | Analista de métricas; Coordinador |
| 17 | 2.9 | Validación final previa a pruebas | 4d | 2026-10-14 | 2026-10-19 | 16 | start no earlier than 2026-10-14 | Asesor terapéutico externo |
| 18 | 3 | **3. Modelo tridimensional y entorno** | 24d | 2026-09-01 | 2026-10-05 |  |  |  |
| 19 | 3.1 | Diseño conceptual y referencias visuales | 4d | 2026-09-01 | 2026-09-04 |  | start no earlier than 2026-09-01 | Artista y modelador 3D; Diseñador de interacción / UX-XR |
| 20 | 3.2 | Modelado de la batería | 10d | 2026-09-07 | 2026-09-21 | 19 | start no earlier than 2026-09-07 | Artista y modelador 3D |
| 21 | 3.3 | Modelado de baquetas y entorno | 10d | 2026-09-07 | 2026-09-21 | 19 | start no earlier than 2026-09-07 | Diseñador de interacción / UX-XR |
| 22 | 3.4 | Texturizado y materiales | 10d | 2026-09-14 | 2026-09-28 | 20SS+5d, 21SS+5d | start no earlier than 2026-09-14 | Artista y modelador 3D |
| 23 | 3.5 | Optimización de geometría para realidad virtual | 10d | 2026-09-22 | 2026-10-05 | 22SS+5d | start no earlier than 2026-09-22 | Artista y modelador 3D; Desarrollador de realidad virtual |
| 24 | 4 | **4. Sistema de interacción y físicas** | 35d | 2026-09-01 | 2026-10-20 |  |  |  |
| 25 | 4.1 | Configuración del proyecto Unity y SDK de Meta | 5d | 2026-09-01 | 2026-09-07 |  | start no earlier than 2026-09-01 | Desarrollador de realidad virtual |
| 26 | 4.2 | Spike de latencia (Go / No-Go) | 5d | 2026-09-08 | 2026-09-14 | 25 | start no earlier than 2026-09-08 | Desarrollador de realidad virtual; Diseñador de audio |
| 27 | 4.3 | Mapeo de controles de realidad virtual | 10d | 2026-09-15 | 2026-09-29 | 26 | start no earlier than 2026-09-15 | Desarrollador de realidad virtual; Diseñador de interacción / UX-XR |
| 28 | 4.4 | Detección de colisiones | 10d | 2026-09-23 | 2026-10-06 | 27SS+5d | start no earlier than 2026-09-23 | Desarrollador de realidad virtual |
| 29 | 4.5 | Medición de velocidad de impacto | 5d | 2026-09-30 | 2026-10-06 | 28SS+5d | start no earlier than 2026-09-30 | Desarrollador de realidad virtual |
| 30 | 4.6 | Integración de modelos tridimensionales con físicas | 5d | 2026-10-07 | 2026-10-13 | 29, 23 | start no earlier than 2026-10-07 | Desarrollador de realidad virtual; Artista y modelador 3D |
| 31 | 4.7 | Ergonomía y prevención de mareo por movimiento | 5d | 2026-10-14 | 2026-10-20 | 30 | start no earlier than 2026-10-14 | Diseñador de interacción / UX-XR; Desarrollador de realidad virtual |

| ID | WBS | Task | Type | Duration | Start | Finish | Predecessors | Constraint | Resources |
| --- | --- | --- | --- | --- | --- | --- | --- | --- | --- |
| 32 | 5 | **5. Sistema de audio y rutinas** |  | 30d | 2026-09-15 | 2026-10-27 |  |  |  |
| 33 | 5.1 | Selección y edición de la librería de muestras |  | 8d | 2026-09-15 | 2026-09-25 | 26 | start no earlier than 2026-09-15 | Diseñador de audio |
| 34 | 5.2 | Capas de intensidad y variación por repetición |  | 7d | 2026-09-28 | 2026-10-06 | 33 | start no earlier than 2026-09-28 | Diseñador de audio |
| 35 | 5.3 | Integración de audio con físicas |  | 10d | 2026-10-07 | 2026-10-20 | 29, 34 | start no earlier than 2026-10-07 | Diseñador de audio; Desarrollador de realidad virtual |
| 36 | 5.4 | Implementación de rutinas rítmicas |  | 6d | 2026-10-14 | 2026-10-21 | 35SS+5d, 13 | start no earlier than 2026-10-14 | Desarrollador de realidad virtual; Diseñador de audio |
| 37 | 5.5 | Guía visual y metrónomo |  | 4d | 2026-10-22 | 2026-10-27 | 36 | start no earlier than 2026-10-22 | Desarrollador de realidad virtual; Diseñador de interacción / UX-XR |
| 38 | 6 | **6. Prototipo funcional integrado** |  | 15d | 2026-10-14 | 2026-11-03 |  |  |  |
| 39 | 6.1 | Menús y navegación |  | 3d | 2026-10-14 | 2026-10-16 | 30SS+5d, 31SS, 15 | start no earlier than 2026-10-14 | Diseñador de interacción / UX-XR |
| 40 | 6.2 | Interfaz de usuario adaptativa |  | 4d | 2026-10-19 | 2026-10-22 | 39 | start no earlier than 2026-10-19 | Diseñador de interacción / UX-XR |
| 41 | 6.3 | Módulo de registro de métricas |  | 3d | 2026-10-23 | 2026-10-27 | 40 | start no earlier than 2026-10-23 | Analista de métricas; Desarrollador de realidad virtual |
| 42 | 6.4 | Integración general y build candidata |  | 5d | 2026-10-28 | 2026-11-03 | 37, 41, 31 | start no earlier than 2026-10-28 | Desarrollador de realidad virtual; Diseñador de interacción / UX-XR |
| 43 | 7 | **7. Pruebas y documentación** |  | 15d | 2026-10-21 | 2026-11-10 |  |  |  |
| 44 | 7.1 | Plan de pruebas y casos |  | 5d | 2026-10-21 | 2026-10-27 | 39SS+5d, 15 | start no earlier than 2026-10-21 | Gerente de proyecto; Analista de métricas |
| 45 | 7.2 | Pruebas de rendimiento y latencia |  | 5d | 2026-10-28 | 2026-11-03 | 42SS, 44 | start no earlier than 2026-10-28 | Gerente de proyecto; Desarrollador de realidad virtual |
| 46 | 7.3 | Pruebas con usuarios |  | 2d | 2026-11-04 | 2026-11-05 | 45, 17 | start no earlier than 2026-11-04 | Coordinador; Diseñador de interacción / UX-XR; Asesor terapéutico externo |
| 47 | 7.4 | Corrección de defectos |  | 2d | 2026-11-05 | 2026-11-06 | 46SS+1d | start no earlier than 2026-11-05 | Desarrollador de realidad virtual; Diseñador de interacción / UX-XR |
| 48 | 7.5 | Manual técnico y de usuario |  | 3d | 2026-11-05 | 2026-11-09 | 47SS | start no earlier than 2026-11-05 | Coordinador; Artista y modelador 3D |
| 49 | 7.6 | Informe de pruebas y resultados |  | 2d | 2026-11-09 | 2026-11-10 | 48SS+2d | start no earlier than 2026-11-09 | Analista de métricas; Gerente de proyecto |
| 50 | 8 | **8. Hitos de control** |  | 47d | 2026-09-04 | 2026-11-10 |  |  |  |
| 51 | 8.1 | H1 — Diseño conceptual aprobado | milestone | 0d | 2026-09-04 | 2026-09-04 |  | start no earlier than 2026-09-04 |  |
| 52 | 8.2 | H2 — Go / No-Go de latencia | milestone | 0d | 2026-09-14 | 2026-09-14 |  | start no earlier than 2026-09-14 |  |
| 53 | 8.3 | H3 — Modelos integrados con físicas | milestone | 0d | 2026-10-13 | 2026-10-13 |  | start no earlier than 2026-10-13 |  |
| 54 | 8.4 | H4 — Rutinas y métricas integradas | milestone | 0d | 2026-10-27 | 2026-10-27 |  | start no earlier than 2026-10-27 |  |
| 55 | 8.5 | H5 — Build candidata congelada | milestone | 0d | 2026-11-03 | 2026-11-03 |  | start no earlier than 2026-11-03 |  |
| 56 | 8.6 | H6 — Cierre del proyecto | milestone | 0d | 2026-11-10 | 2026-11-10 |  | start no earlier than 2026-11-10 |  |
